# 3.1何事WBS

Schedule from MS Project, 2020-02-20 to 2020-06-15, costs in ¥.
HP

## Calendars

- 标准: Mon-Fri 08:00-12:00, 13:00-17:00; Sat-Sun off.

## Resources

| Resource | Rate | Cost per use |
| --- | --- | --- |
| 项目经理 |  |  |
| 产品经理 |  |  |
| 技术专家 |  |  |
| UI设计师 |  |  |
| 测试专家 |  |  |
| 设计专家 |  |  |
| 程序员1 |  |  |
| 程序员2 |  |  |
| 程序员3 |  |  |
| 测试员1 | 40 | 10 |
| UI专家 |  |  |

## Schedule

| ID | WBS | Task | Type | Duration | Start | Finish | Predecessors | Total slack | Free slack | Constraint | Resources | Work | Cost |
| --- | --- | --- | --- | --- | --- | --- | --- | --- | --- | --- | --- | --- | --- |
| 1 | 1 | **启动** |  | 5d | 2020-02-20 | 2020-02-26 |  |  |  |  |  | 160h | 7,752 |
| 2 | 1.1 | 任命项目经理 | manual | 1d | 2020-02-20 | 2020-02-20 |  |  |  |  |  |  |  |
| 3 | 1.2 | 指定里程碑计划 | manual | 1d | 2020-02-20 | 2020-02-20 |  |  |  |  | 项目经理 | 8h | 420 |
| 4 | 1.3 | 组建核心团队 | manual | 1d | 2020-02-20 | 2020-02-20 |  |  |  | start no earlier than 2020-02-20 | 测试员1; 产品经理; 项目经理; 技术专家 | 32h | 1,736 |
| 5 | 1.4 | 分析干系人 | manual | 1d | 2020-02-21 | 2020-02-21 |  |  |  |  | UI设计师; 测试员1; 测试专家; 产品经理; 程序员1; 程序员2; 程序员3; 项目经理; 技术专家 | 72h | 3,030 |
| 6 | 1.5 | 制定项目章程 | manual | 1d | 2020-02-24 | 2020-02-24 | 2, 4, 3, 5 |  |  |  | 项目经理 | 8h | 420 |
| 7 | 1.6 | 开项目启动大会 | manual | 1d | 2020-02-25 | 2020-02-25 | 6 |  |  |  | 测试员1; 产品经理; 测试专家; 项目经理; 技术专家 | 40h | 2,146 |
| 8 | 2 | **规划** |  | 16d | 2020-03-27 | 2020-04-17 |  |  |  |  |  | 504h | 27,246 |
| 9 | 2.1 | **规划范围** |  | 10d | 2020-02-26 | 2020-03-10 |  |  |  |  |  | 208h | 12,086 |
| 10 | 2.1.1 | 制定需求说明书 |  | 10d | 2020-02-26 | 2020-03-10 | 7 | -2d | 0d |  | 产品经理 | 80h | 6,406 |
| 11 | 2.1.2 | 界面设计 |  | 5d | 2020-02-27 | 2020-03-04 | 10SS | -3d | 0d | start no earlier than 2020-02-27 | 测试员1 | 40h | 1,610 |
| 12 | 2.1.3 | 详细设计说明书 |  | 5d | 2020-02-27 | 2020-03-04 | 10SS | -3d | 0d | start no earlier than 2020-02-27 | 测试员1 | 40h | 1,610 |
| 13 | 2.1.4 | 范围说明书 |  | 3d | 2020-02-27 | 2020-03-02 | 10SS | -1d | 0d | start no earlier than 2020-02-27 | 项目经理 | 24h | 1,220 |
| 14 | 2.1.5 | 创建WBS |  | 2d | 2020-03-05 | 2020-03-06 | 11, 12, 13 | -3d | 0d | start no earlier than 2020-02-28 | 项目经理 | 16h | 820 |
| 15 | 2.1.6 | 形成范围基准 |  | 1d | 2020-03-09 | 2020-03-09 | 14 | -3d | 0d |  | 项目经理 | 8h | 420 |
| 16 | 2.2 | **规划时间** |  | 5d | 2020-03-10 | 2020-03-16 |  |  |  |  |  | 56h | 2,900 |
| 17 | 2.2.1 | 排列工作包顺序 |  | 1d | 2020-03-10 | 2020-03-10 | 15 | -3d | 0d |  | 项目经理 | 8h | 420 |
| 18 | 2.2.2 | 估算资源 |  | 2d | 2020-03-11 | 2020-03-12 | 17 | -3d | 0d |  | 项目经理 | 16h | 820 |
| 19 | 2.2.3 | 估算持续时间 |  | 2d | 2020-03-13 | 2020-03-16 | 18 | -3d | 0d |  | 项目经理 | 16h | 820 |
| 20 | 2.2.4 | 制定进度计划 |  | 1d | 2020-03-17 | 2020-03-17 | 19 | -3d | 0d |  | 项目经理 | 8h | 420 |
| 21 | 2.2.5 | 形成进度基准 |  | 1d | 2020-03-18 | 2020-03-18 | 20 | -3d | 0d |  | 项目经理 | 8h | 420 |
| 22 | 2.3 | **规划成本** |  | 3d | 2020-03-19 | 2020-03-23 |  |  |  |  |  | 48h | 2,460 |
| 23 | 2.3.1 | 项目成本估算 |  | 3d | 2020-03-19 | 2020-03-23 | 21 | -3d | 0d |  | 项目经理 | 24h | 1,220 |
| 24 | 2.3.2 | 项目预算 |  | 2d | 2020-03-24 | 2020-03-25 | 23 | -3d | 0d |  | 项目经理 | 16h | 820 |
| 25 | 2.3.3 | 形成范围基准 |  | 1d | 2020-03-26 | 2020-03-26 | 24 | -3d | 0d |  | 项目经理 | 8h | 420 |

| ID | WBS | Task | Duration | Start | Finish | Predecessors | Total slack | Free slack | Resources | Work | Cost |
| --- | --- | --- | --- | --- | --- | --- | --- | --- | --- | --- | --- |
| 26 | 2.4 | **规划质量** | 7d | 2020-03-27 | 2020-04-06 |  |  |  |  | 64h | 3,220 |
| 27 | 2.4.1 | 制定测试计划 | 2d | 2020-03-27 | 2020-03-30 | 15 | -1d | 0d | 测试专家 | 16h | 810 |
| 28 | 2.4.2 | 制定测试用例 | 6d | 2020-03-31 | 2020-04-07 | 27 | -1d | 0d | 测试专家 | 48h | 2,410 |
| 29 | 2.5 | **规划人力资源** | 3d | 2020-03-27 | 2020-03-31 |  | 9d | 4d |  | 24h | 1,240 |
| 30 | 2.5.1 | 制定人力资源计划 | 2d | 2020-03-27 | 2020-03-30 | 18 | 9d | 0d | 项目经理 | 16h | 820 |
| 31 | 2.5.2 | 制定人员配备管理计划 | 1d | 2020-03-31 | 2020-03-31 | 30 | 9d | 0d | 项目经理 | 8h | 420 |
| 32 | 2.6 | **规划沟通** | 2d | 2020-04-01 | 2020-04-02 |  | 11d |  |  | 16h | 820 |
| 33 | 2.6.1 | 制定沟通管理计划 | 2d | 2020-04-01 | 2020-04-02 | 31 | 11d |  | 项目经理 | 16h | 820 |
| 34 | 2.7 | **规划采购** | 7d | 2020-03-27 | 2020-04-06 |  | 9d |  |  | 56h | 2,840 |
| 35 | 2.7.1 | 自制外购分析 | 2d | 2020-03-27 | 2020-03-30 | 18 | 9d | 0d | 项目经理 | 16h | 820 |
| 36 | 2.7.2 | 制定采购文件 | 5d | 2020-03-31 | 2020-04-06 | 35 | 9d |  | 项目经理 | 40h | 2,020 |
| 37 | 2.8 | **规划风险** | 3d | 2020-04-07 | 2020-04-09 |  | 5d |  |  | 24h | 1,260 |
| 38 | 2.8.1 | 识别风险 | 1d | 2020-04-07 | 2020-04-07 | 16, 22, 26, 29 | 5d | 0d | 项目经理 | 8h | 420 |
| 39 | 2.8.2 | 风险分析 | 1d | 2020-04-08 | 2020-04-08 | 38 | 5d | 0d | 项目经理 | 8h | 420 |
| 40 | 2.8.3 | 指定风险登记册 | 1d | 2020-04-09 | 2020-04-09 | 39 | 5d | 0d | 项目经理 | 8h | 420 |
| 41 | 2.9 | 规划整合 | 1d | 2020-04-10 | 2020-04-10 | 40 | 5d |  | 项目经理 | 8h | 420 |
| 42 | 3 | **执行与监控** | 46d | 2020-04-13 | 2020-06-15 |  |  |  |  | 4120h | 65,898 |
| 43 | 3.1 | 组建项目团队 | 3d | 2020-04-13 | 2020-04-15 | 18 | 8d | 0d | 测试员1; 测试专家; 产品经理; 技术专家; 项目经理 | 120h | 6,306 |
| 44 | 3.2 | **项目执行** | 16d | 2020-04-16 | 2020-05-07 |  | 8d |  |  | 344h | 4,984 |
| 45 | 3.2.1 | **登录模块** | 3d | 2020-04-16 | 2020-04-20 |  | 33d |  |  | 24h | 250 |
| 46 | 3.2.1.1 | 注册登录 | 3d | 2020-04-16 | 2020-04-20 | 43 | 33d | 0d | 程序员1 | 24h | 250 |
| 47 | 3.2.2 | **主页模块** | 16d | 2020-04-16 | 2020-05-07 |  | 8d |  |  | 320h | 4,734 |
| 48 | 3.2.2.1 | **活动模块** | 7d | 2020-04-21 | 2020-04-29 |  | 33d |  |  | 56h | 590 |
| 49 | 3.2.2.1.1 | 活动主页 | 3d | 2020-04-21 | 2020-04-23 | 46 | 33d | 0d | 程序员1 | 24h | 250 |
| 50 | 3.2.2.1.2 | 组织详情页 | 2d | 2020-04-24 | 2020-04-27 | 49 | 33d | 0d | 程序员1 | 16h | 170 |
| 51 | 3.2.2.1.3 | 页面详情活动页 | 2d | 2020-04-28 | 2020-04-29 | 50 | 33d |  | 程序员1 | 16h | 170 |

| ID | WBS | Task | Duration | Start | Finish | Predecessors | Total slack | Free slack | Resources | Work | Cost |
| --- | --- | --- | --- | --- | --- | --- | --- | --- | --- | --- | --- |
| 52 | 3.2.2.2 | **跳槽市场模块** | 5d | 2020-04-30 | 2020-05-06 |  |  |  |  | 64h | 680 |
| 53 | 3.2.2.2.1 | 商品详情 | 3d | 2020-04-30 | 2020-05-04 | 43 | 0d |  | 程序员1 | 24h | 250 |
| 54 | 3.2.2.2.2 | 购买下单 | 2d | 2020-05-05 | 2020-05-06 | 53 | 0d |  | 程序员1 | 16h | 170 |
| 55 | 3.2.2.2.3 | 咨询商家 | 2d | 2020-04-30 | 2020-05-01 | 43 | 3d |  | 程序员1 | 16h | 170 |
| 56 | 3.2.2.2.4 | 求购商品 | 1d | 2020-04-30 | 2020-04-30 | 43 | 4d |  | 程序员1 | 8h | 90 |
| 57 | 3.2.2.3 | **周边模块** | 14d | 2020-04-16 | 2020-05-05 |  | 8d |  |  | 112h | 1,800 |
| 58 | 3.2.2.3.1 | 周边主页 | 2d | 2020-04-16 | 2020-04-17 | 43 | 8d | 0d | 程序员2 | 16h | 260 |
| 59 | 3.2.2.3.2 | **美食** | 8d | 2020-04-20 | 2020-04-29 |  | 33d |  |  | 64h | 1,020 |
| 60 | 3.2.2.3.2.1 | 浏览美食 | 3d | 2020-04-20 | 2020-04-22 | 58 | 33d | 0d | 程序员2 | 24h | 380 |
| 61 | 3.2.2.3.2.2 | 店铺详情 | 3d | 2020-04-23 | 2020-04-27 | 60 | 33d | 0d | 程序员2 | 24h | 380 |
| 62 | 3.2.2.3.2.3 | 购买下单 | 2d | 2020-04-28 | 2020-04-29 | 61 | 33d |  | 程序员2 | 16h | 260 |
| 63 | 3.2.2.3.3 | **美景** | 4d | 2020-04-30 | 2020-05-05 |  |  |  |  | 32h | 520 |
| 64 | 3.2.2.3.3.1 | 浏览景点 | 3d | 2020-04-30 | 2020-05-04 | 58 | 0d |  | 程序员2 | 24h | 380 |
| 65 | 3.2.2.3.3.2 | 景点详情 | 1d | 2020-05-05 | 2020-05-05 | 64 | 0d |  | 程序员2 | 8h | 140 |
| 66 | 3.2.2.4 | **咨询模块** | 3d | 2020-04-16 | 2020-04-20 |  | 40d |  |  | 40h | 760 |
| 67 | 3.2.2.4.1 | 咨询主页 | 1d | 2020-04-16 | 2020-04-16 | 43 | 40d | 0d | 程序员3 | 8h | 154 |
| 68 | 3.2.2.4.2 | 校内交流 | 2d | 2020-04-17 | 2020-04-20 | 67 | 40d |  | 程序员3 | 16h | 298 |
| 69 | 3.2.2.4.3 | 校外交流 | 1d | 2020-04-17 | 2020-04-17 | 67 | 41d |  | 程序员3 | 8h | 154 |
| 70 | 3.2.2.4.4 | 学习资料 | 1d | 2020-04-17 | 2020-04-17 | 67 | 41d |  | 程序员3 | 8h | 154 |
| 71 | 3.2.2.5 | **个人中心模块** | 16d | 2020-04-16 | 2020-05-07 |  | 27d |  |  | 48h | 904 |
| 72 | 3.2.2.5.1 | 个人展示 | 1d | 2020-04-16 | 2020-04-16 | 43 | 38d | 0d | 程序员3 | 8h | 154 |
| 73 | 3.2.2.5.2 | 认证中心 | 2d | 2020-04-17 | 2020-04-20 | 72 | 38d | 0d | 程序员3 | 16h | 298 |
| 74 | 3.2.2.5.3 | 购物清单 | 1d | 2020-05-07 | 2020-05-07 | 54, 43 | 27d |  | 程序员3 | 8h | 154 |
| 75 | 3.2.2.5.4 | 我的动态及消息 | 2d | 2020-04-21 | 2020-04-22 | 73 | 38d |  | 程序员3 | 16h | 298 |

| ID | WBS | Task | Type | Duration | Start | Finish | Predecessors | Total slack | Constraint | Resources | Work | Cost |
| --- | --- | --- | --- | --- | --- | --- | --- | --- | --- | --- | --- | --- |
| 76 | 3.3 | **项目监控** |  | 3d | 2020-05-15 | 2020-05-19 |  |  |  |  | 528h | 27,472 |
| 77 | 3.3.1 | 各项指标监控 | manual | 10d | 2020-04-16 | 2020-04-29 | 43 |  | start no earlier than 2020-04-16 | 项目经理; 技术专家 | 160h | 7,240 |
| 78 | 3.3.2 | 监控评审 | manual | 1d | 2020-05-05 | 2020-05-05 | 77 |  | start no earlier than 2020-05-05 | 产品经理; 项目经理; 技术专家 | 24h | 1,406 |
| 79 | 3.3.3 | 变更评审 | manual | 1d | 2020-05-06 | 2020-05-06 | 78 |  |  | 测试专家; 技术专家; 项目经理 | 24h | 1,170 |
| 80 | 3.3.4 | 例会 | manual | 10d | 2020-05-01 | 2020-05-14 | 43 |  | start no earlier than 2020-05-01 | 测试专家; 技术专家; 项目经理; 产品经理 | 320h | 17,656 |
| 81 | 3.4 | **管理干系人** |  | 1d | 2020-05-11 | 2020-05-11 |  |  |  |  | 24h | 1,260 |
| 82 | 3.4.1 | 发布项目信息 |  | 1d | 2020-05-11 | 2020-05-11 | 43 | 0d |  | 项目经理 | 8h | 420 |
| 83 | 3.4.2 | 报告监控指标 |  | 1d | 2020-05-11 | 2020-05-11 | 43 | 0d |  | 项目经理 | 8h | 420 |
| 84 | 3.4.3 | 干系人沟通 |  | 1d | 2020-05-11 | 2020-05-11 | 43 | 0d |  | 项目经理 | 8h | 420 |
| 85 | 3.5 | **团队建设** |  | 1d | 2020-05-17 | 2020-05-17 |  |  |  |  | 2808h | 9,090 |
| 86 | 3.5.1 | 培训 | manual | 13d | 2020-04-29 | 2020-05-15 | 43 |  | start no earlier than 2020-04-29 | UI设计师; 测试专家; 测试员1; 产品经理; 程序员1; 程序员2; 程序员3; 技术专家; 项目经理 | 936h | 3,030 |
| 87 | 3.5.2 | 娱乐活动 | manual | 13d | 2020-04-29 | 2020-05-15 | 43 |  | start no earlier than 2020-04-29 | UI设计师; 测试员1; 测试专家; 产品经理; 程序员1; 程序员2; 程序员3; 技术专家; 项目经理 | 936h | 3,030 |
| 88 | 3.5.3 | 沟通 | manual | 13d | 2020-04-29 | 2020-05-15 | 43 |  | start no earlier than 2020-04-29 | 项目经理; UI设计师; 测试员1; 测试专家; 产品经理; 程序员1; 程序员2; 程序员3; 技术专家 | 936h | 3,030 |
| 89 | 3.6 | 采购 | manual | 1d | 2020-04-16 | 2020-04-16 | 43 |  |  | 项目经理 | 8h | 420 |
| 90 | 3.7 | 项目验收 | manual | 12d | 2020-04-29 | 2020-05-14 | 43 |  | start no earlier than 2020-04-29 | 产品经理; 技术专家; 项目经理 | 288h | 16,366 |
| 91 | 4 | **收尾** |  | 1d | 2020-05-15 | 2020-05-15 |  | 21d |  |  | 88h | 4,906 |
| 92 | 4.1 | 项目经验 |  | 1d | 2020-05-15 | 2020-05-15 | 90 | 21d |  | 项目经理; UI设计师; 技术专家; 测试专家; 产品经理 | 40h | 2,316 |
| 93 | 4.2 | 结束采购 |  | 1d | 2020-05-15 | 2020-05-15 | 90 | 21d |  | 项目经理; UI设计师 | 16h | 920 |
| 94 | 4.3 | 项目内部收尾 |  | 1d | 2020-05-15 | 2020-05-15 | 90 | 21d |  | UI设计师; 测试专家; 技术专家; 项目经理 | 32h | 1,670 |
